# New OSG PKI Project

Schedule from MS Project, 2012-03-12 to 2014-03-24, A marks actual dates.
FNAL

## Calendars

- Standard: Mon-Fri 08:00-12:00, 13:00-17:00; Sat-Sun off. Exceptions (off unless hours are given): 2012-11-21 to 2012-11-23 (Thanksgiving), 2012-12-24 to 2013-01-01 (Christmas Holiday).

## Resources

| Resource |
| --- |
| Welch |
| Basney |
| Altunay |
| Fischer |
| Sehgal |
| Padmanabhan |

## Schedule

| ID | WBS | Task | Duration | Start | Finish | Predecessors | Complete | Remaining | Total slack | Constraint | InCharge |
| --- | --- | --- | --- | --- | --- | --- | --- | --- | --- | --- | --- |
| 1 | 1 | **Planning Phase** | 50d | 2012-03-12 A | 2012-05-18 A |  | 100% |  |  |  | Welch |
| 2 | 1.1 | Development and Deployment Plan | 30d | 2012-03-12 A | 2012-04-20 A |  | 100% |  |  |  | Hayashi, Fischer |
| 3 | 1.2 | Document Acceptance Test Plan | 15d | 2012-04-23 A | 2012-05-11 A | 2 | 100% |  |  |  | Welch, Roy |
| 4 | 1.3 | Document Transition Plan | 15d | 2012-04-23 A | 2012-05-11 A | 2 | 100% |  |  |  | Welch, Pordes |
| 5 | 1.4 | Document Communications Plan | 10d | 2012-04-23 A | 2012-05-04 A | 2 | 100% |  |  |  | Pordes |
| 6 | 1.5 | Document Training Plan | 10d | 2012-04-23 A | 2012-05-04 A | 2 | 100% |  |  |  | Altunay |
| 7 | 1.6 | Define Contingency Plan (for the event that the DigiCert CA becomes unavailable) | 15d | 2012-04-23 A | 2012-05-11 A | 2 | 100% |  |  |  | Altunay |
| 8 | 1.7 | Baseline WBS and Timeline | 5d | 2012-05-14 A | 2012-05-18 A | 6, 2, 3, 4, 5, 7 | 100% |  |  |  | Sehgal |
| 9 | 1.8 | Finalize & Sign Contract between DigiCert & Indiana | 20d | 2012-04-23 A | 2012-05-18 A | 2 | 100% |  |  |  | Welch |
| 10 | 2 | **Development Phase** | 80d | 2012-05-21 A | 2012-09-07 A |  | 100% |  |  |  | Welch |
| 11 | 2.1 | **Develop the OSG CA web service front-end and integrate with the DigiCert CA** | 65d | 2012-05-21 A | 2012-08-17 A |  | 100% |  |  |  | Hayashi |
| 12 | 2.1.1 | Develop front-end software and associated documentation | 30d | 2012-05-21 A | 2012-06-29 A | 1 | 100% |  |  |  | Hayashi |
| 13 | 2.1.2 | Develop and package new CLI scripts | 10d | 2012-07-02 A | 2012-07-13 A | 12 | 100% |  |  |  | Mathure, Selmeci |
| 14 | 2.1.3 | Review by the OSG software area of the resulting code and support documentation. | 10d | 2012-07-16 A | 2012-07-27 A | 12, 13 | 100% |  |  |  | Roy |
| 15 | 2.1.4 | Developer Testing of New Solutions | 15d | 2012-07-30 A | 2012-08-17 A | 14 | 100% |  |  |  | Hayashi, Mathure |
| 16 | 2.2 | Define changes to operational procedures, policy and other changes defined in the Planning phase. | 15d | 2012-05-21 A | 2012-06-08 A | 1 | 100% |  |  |  | Quick |
| 17 | 2.3 | Conduct Acceptance Testing of System | 15d | 2012-08-20 A | 2012-09-07 A | 11 | 100% |  |  |  | Hayashi, Deximo, Mathure, Roy |
| 18 | 2.4 | Update Transition Plan | 3d | 2012-08-20 A | 2012-08-22 A | 11 | 100% |  |  |  | Welch |
| 19 | 2.5 | Understand and document impact of DN changes | 15d | 2012-08-20 A | 2012-09-07 A | 11 | 100% |  |  |  | Basney |
| 20 | 2.6 | Update Training Plan | 3d | 2012-08-20 A | 2012-08-22 A | 11 | 100% |  |  |  | Altunay, Basney |
| 21 | 2.7 | Update Communications Plan | 3d | 2012-08-20 A | 2012-08-22 A | 11 | 100% |  |  |  | Pordes |
| 22 | 3 | **Deployment Phase** | 27d | 2012-08-23 A | 2012-09-28 |  | 99% | 0.12d | 376d |  | Welch |
| 23 | 3.1 | **Deploy the OSG CA - the OSG web front-end and operations components** | 15d | 2012-09-10 A | 2012-09-28 A |  | 100% |  |  |  | Hayashi |
| 24 | 3.1.1 | Install Software | 5d | 2012-09-10 A | 2012-09-14 A | 17 | 100% |  |  |  | Hayashi |
| 25 | 3.1.2 | Friendly User Testing | 10d | 2012-09-17 A | 2012-09-28 A | 24 | 100% |  |  |  | Hayashi, Welch, Deximo |
| 26 | 3.2 | Develop and deploy training for OSG Staff | 25d | 2012-08-23 A | 2012-09-26 A | 20 | 100% |  |  |  | Altunay, Basney |
| 27 | 3.3 | Implement changes to operational procedures, policy and other changes defined in the Planning phase. | 10d | 2012-09-10 A | 2012-09-21 A | 10 | 100% |  |  |  | Deximo |
| 28 | 3.4 | Transfer new software packages ownership to OSG Software team | 5d | 2012-09-10 A | 2012-09-14 | 10 | 95% | 0.25d | 386d |  | Hayashi, Cartwright |
| 29 | 3.5 | Gate Report for completion of Development/Deployment phase | 3d | 2012-09-26 A | 2012-09-28 A |  | 100% |  |  | start no earlier than 2012-09-26 | Welch, Sehgal |

Notes:
- 12: All complete except documentation as of 9/12
- 13: Packaging is still outstanding as of 9/12
- 19: Waiting to hear from ATLAS as of 9/12

| ID | WBS | Task | Duration | Start | Finish | Predecessors | Complete | Remaining | Total slack | Free slack | Constraint | InCharge |
| --- | --- | --- | --- | --- | --- | --- | --- | --- | --- | --- | --- | --- |
| 30 | 4 | **Transition** | 75d | 2012-10-01 A | 2013-01-25 |  | 89% | 8.47d | 30d | 0d |  | Welch |
| 31 | 4.1 | Complete Execution of Communications Plan | 4d | 2012-10-01 A | 2012-10-04 A | 22 | 100% |  |  |  |  | Pordes |
| 32 | 4.2 | Execute Training Plan for User Community | 20d | 2012-10-01 A | 2012-10-26 A | 22 | 100% |  |  |  |  | Altunay |
| 33 | 4.3 | Issue DigiCerts certs for "friendly" user community | 5d | 2012-10-01 A | 2012-10-05 A | 22 | 100% |  |  |  |  | Deximo |
| 34 | 4.4 | Regression test OSG functionality using new Certs | 50d | 2012-10-08 A | 2012-12-19 A | 33 | 100% |  |  |  |  | Altunay |
| 35 | 4.5 | Perform test Audits with DigiCert | 5d | 2012-10-08 A | 2012-10-12 | 33 | 25% | 3.75d | 95d |  |  | Welch |
| 36 | 4.6 | Management Readiness Review | 20d | 2012-12-20 A | 2013-01-25 | 34 | 60% | 8d | 30d |  |  | Welch |
| 37 | 5 | **First Year of Operations** | 301d | 2013-01-28 A | 2014-03-24 |  | 10% | 271.07d | 0d |  |  | Quick, Welch |
| 38 | 5.1 | Start issueing new and renewal certs from DigiCert | 1d | 2013-01-28 A | 2013-01-28 A | 30 | 100% |  |  |  |  | Deximo |
| 39 | 5.2 | Update SLA for OIM | 10d | 2013-02-15 | 2013-02-28 | 30 |  |  | 277d |  | finish no earlier than 2013-02-28 | Quick, Welch |
| 40 | 5.3 | **"Drain" all active certs from DOEGrids CA** | 300d | 2013-01-28 A | 2014-03-23 |  | 10% | 270d | 0d |  |  | Esnet |
| 41 | 5.3.1 | Stop issueing new certs from DOEGrids | 40d | 2013-01-28 A | 2013-03-23 | 30 | 10% | 36d | 260d |  | finish no earlier than 2013-03-23 | Esnet |
| 42 | 5.3.2 | Continue issuing CRLs for DOEGrids Certs | 300d | 2013-01-28 A | 2014-03-23 | 30 | 10% | 270d | 0d |  | finish no earlier than 2014-03-23 | Esnet |
| 43 | 5.4 | Shut off DEOGrid CA | 1d | 2014-03-24 | 2014-03-24 | 41, 42 |  |  | 0d |  | finish no earlier than 2014-03-23 | Esnet |
